# Toll Fee Management_MasterPlan

How a schedule from MS Project changed from version to version. A marks actual dates.

## Version 1 (saved 2011-05-23)

| ID | WBS | Task | Duration | Start | Finish | Predecessors | Total float | Constraint |
| --- | --- | --- | --- | --- | --- | --- | --- | --- |
| 1 | 1 | **Toll Fee Management Capstone Project** | 76d | 2011-05-09 | 2011-08-22 |  |  | as late as possible |
| 2 | 1.1 | **Inception** | 11d | 2011-05-09 | 2011-05-23 |  |  | as late as possible |
| 3 | 1.1.1 | **Initiation** | 1d | 2011-05-23 | 2011-05-23 |  | 10d | as late as possible |
| 4 |  | Prepare register | 4h | 2011-05-23 | 2011-05-23 |  | 10d | as late as possible |
| 5 |  | Kick off Meeting | 4h | 2011-05-23 | 2011-05-23 | 4 | 10d | as late as possible |
| 6 | 1.1.2 | **Researching technologies and algorithm** | 6d | 2011-05-09 | 2011-05-16 |  |  | as late as possible |
| 7 |  | Research existing systems | 1d | 2011-05-09 | 2011-05-09 |  | 0d | start no later than 2011-05-09 |
| 8 |  | Research algorithm | 1d | 2011-05-10 | 2011-05-10 | 7 | 0d | start no later than 2011-05-10 |
| 9 | 1.1.2.3 | **Create project demo** | 4d | 2011-05-11 | 2011-05-16 |  |  | as late as possible |
| 10 |  | Show and control camera in application | 1d | 2011-05-11 | 2011-05-11 | 7 | 1d | start no later than 2011-05-11 |
| 11 |  | Recognized characters and numbers | 3d | 2011-05-12 | 2011-05-16 | 8 | 1d | as late as possible |
| 12 | 1.1.3 | **Create report No.1** | 6d | 2011-05-09 | 2011-05-16 |  |  | as late as possible |
| 13 |  | Overview existing methods and systems | 3d | 2011-05-09 | 2011-05-11 |  | 0d | start no later than 2011-05-09 |
| 14 |  | Write background | 1d | 2011-05-12 | 2011-05-12 | 13 | 0d | start no later than 2011-05-12 |
| 15 |  | Fix comments | 2d | 2011-05-13 | 2011-05-16 | 14 | 0d | as late as possible |
| 16 |  | Summit report 1 | 0d | 2011-05-16 | 2011-05-16 |  | 5d | start no later than 2011-05-16 |
| 17 | 1.1.4 | **Develop project plan** | 5d | 2011-05-17 | 2011-05-23 |  |  | as late as possible |
| 18 |  | Team planning meeting | 1d? | 2011-05-17 | 2011-05-17 |  | 6d | start no later than 2011-05-17 |
| 19 |  | Identifying, dicussing, and prioritizing risks | 2d | 2011-05-18 | 2011-05-19 | 18 | 6d | start no later than 2011-05-18 |
| 20 |  | Create report 2 draff | 1d? | 2011-05-20 | 2011-05-20 | 19 | 6d | start no later than 2011-05-20 |
| 21 |  | Review Project Plan | 1d? | 2011-05-23 | 2011-05-23 | 20 | 4d | as late as possible |
| 22 |  | Summit report No.2 | 0d | 2011-05-23 | 2011-05-23 |  | 10d | start no later than 2011-05-23 |
| 23 | 1.2 | **Elaboration** | 57d | 2011-05-24 | 2011-08-10 |  |  | as late as possible |
| 24 | 1.2.1 | **Analysis** | 9d | 2011-05-24 | 2011-06-03 |  |  | as late as possible |
| 25 | 1.2.1.1 | **Create Software Requirements Specifications** | 9d | 2011-05-24 | 2011-06-03 |  |  | as late as possible |
| 26 |  | User Requirement Specification | 3d | 2011-05-24 | 2011-05-26 |  | 11d | start no later than 2011-05-24 |
| 27 |  | System Requirement Specification | 4d | 2011-05-27 | 2011-06-01 | 26 | 11d | start no later than 2011-05-27 |
| 28 |  | Review SRS | 2d | 2011-06-02 | 2011-06-03 | 27 | 7d | as late as possible |
| 29 |  | Submit report No.3 Software Requirements Specifications | 0d | 2011-06-03 | 2011-06-03 |  | 9d | as late as possible |
| 30 | 1.2.2 | **Design** | 12d | 2011-06-02 | 2011-06-17 |  |  | as late as possible |
| 31 |  | Database Design | 2d | 2011-06-02 | 2011-06-03 | 27 | 0d |  |
| 32 |  | System Architecture Design | 3d | 2011-06-06 | 2011-06-08 | 31 | 0d |  |
| 33 |  | Create Code Prototype | 5d? | 2011-06-09 | 2011-06-15 | 32 | 0d | finish no later than 2011-06-15 |
| 34 |  | Detailed design | 10d | 2011-06-02 | 2011-06-15 | 27 | 0d | as late as possible |
| 35 |  | User Interface Design | 2d | 2011-06-16 | 2011-06-17 | 34 | 0d |  |
| 36 |  | Submit report No.4 Software Design Description (SDD) | 0d | 2011-06-17 | 2011-06-17 |  | 12d | as late as possible |
| 37 | 1.3 | **Construction** | 40d | 2011-06-20 | 2011-08-12 |  |  | as late as possible |
| 38 | 1.3.1 | **Coding** | 30d | 2011-06-20 | 2011-07-29 |  |  | as late as possible |
| 39 |  | Client Development | 15d | 2011-06-20 | 2011-07-08 |  | 30d | start no later than 2011-06-20 |
| 40 |  | Server Development | 10d | 2011-07-11 | 2011-07-22 |  | 45d | start no later than 2011-07-11 |
| 41 |  | Crawl and synchronize Data Development | 5d | 2011-07-25 | 2011-07-29 | 40 | 25d | as late as possible |
| 42 |  | Create Software User’s Manual (SUM) | 5d? | 2011-07-25 | 2011-07-29 | 39, 40 | 40d | finish no later than 2011-07-29 |
| 43 | 1.3.2 | **Testing** | 8d | 2011-08-01 | 2011-08-10 |  |  | as late as possible |
| 44 |  | Create Test Plan | 1d? | 2011-08-01 | 2011-08-01 |  | 60d | start no later than 2011-08-01 |
| 45 |  | Integration Test | 2d | 2011-08-02 | 2011-08-03 | 44 | 60d | finish no later than 2011-08-03 |
| 46 |  | System Test | 3d | 2011-08-04 | 2011-08-08 | 45 | 60d | finish no later than 2011-08-08 |
| 47 |  | Create and submit Report No.5 Software Test Documentation (STD) | 2d | 2011-08-09 | 2011-08-10 | 46 | 60d | start no later than 2011-08-09 |
| 48 | 1.3.3 | **Deployment** | 2d | 2011-08-11 | 2011-08-12 |  |  | as late as possible |
| 49 |  | Input dummy data | 1d? | 2011-08-11 | 2011-08-11 |  | 0d |  |
| 50 |  | Deploy system | 1d? | 2011-08-12 | 2011-08-12 | 49 | 0d | start no later than 2011-08-12 |
| 51 |  | Complete Deploy System | 0d | 2011-08-12 | 2011-08-12 |  | 2d | as late as possible |
| 52 | 1.4 | **Transition** | 6d | 2011-08-15 | 2011-08-22 |  |  | as late as possible |
| 53 | 1.4.1 | **Preclosing** | 5d | 2011-08-12 | 2011-08-18 |  |  | as late as possible |
| 54 |  | Complete program and documents | 5d | 2011-08-12 | 2011-08-18 |  | 0d |  |
| 55 |  | Submit the last Document and CD source code | 0d | 2011-08-18 | 2011-08-18 | 54 | 0d |  |
| 56 | 1.4.2 | **Closing** | 1d | 2011-08-22 | 2011-08-22 | 55 |  | as late as possible |
| 57 |  | Represent Capstone Project | 1d? | 2011-08-22 | 2011-08-22 |  | 75d | finish no later than 2011-08-22 |
| 58 |  | Project completed | 0d | 2011-08-22 | 2011-08-22 |  | 75d | start no later than 2011-08-22 |

## Version 2 (saved 2011-05-23)

Last finish stays 2011-08-22.

Added:

| ID | Task | Duration | Start | Finish | Predecessors | Constraint | Resources |
| --- | --- | --- | --- | --- | --- | --- | --- |
| 19 | Prepare scope statement and WBS | 2d | 2011-05-18 | 2011-05-19 | 18 | start no later than 2011-05-18 | LinhNAN |
| 26 | Compose High level requirements | 2d | 2011-05-26 | 2011-05-27 | 25 | start no later than 2011-05-26 | LinhNAN |
| 27 | **Compose Functional Requirements** | 3d | 2011-05-30 | 2011-06-01 |  | as late as possible |  |
| 28 | Client | 3d | 2011-05-30 | 2011-06-01 | 26 | as late as possible | DangTH |
| 29 | Server | 3d | 2011-05-30 | 2011-06-01 | 26 | as late as possible | HieuNX |
| 30 | Compose Non-Functional Requirements | 3d | 2011-05-30 | 2011-06-01 | 26 | start no later than 2011-05-30 | LinhNAN |
| 36 | Overall architecture design | 1d? | 2011-06-06 | 2011-06-06 |  | finish no later than 2011-06-06 | LinhNAN |
| 37 | Client | 2d | 2011-06-07 | 2011-06-08 | 36 | finish no later than 2011-06-08 | DangTH |
| 38 | Server | 2d | 2011-06-07 | 2011-06-08 | 36 | finish no later than 2011-06-08 | HieuNX |
| 39 | Crawl and synchronize Data | 2d | 2011-06-07 | 2011-06-08 | 36 | finish no later than 2011-06-08 | QuanTV |
| 41 | Client | 2d | 2011-06-09 | 2011-06-10 |  | as late as possible | DangTH |
| 42 | Server | 2d | 2011-06-09 | 2011-06-10 |  | as late as possible | HieuNX |
| 43 | Crawl and synchronize Data | 2d | 2011-06-09 | 2011-06-10 |  | as late as possible | QuanTV |

Removed: 20 Create report 2 draff; 24 Analysis; 27 System Requirement Specification; 35 User Interface Design

Changed:

| ID | Task | Start | Finish | Duration | Total float | Predecessors | Other |
| --- | --- | --- | --- | --- | --- | --- | --- |
| 5 | Hold Kick off Meeting |  |  |  |  |  | was named Kick off Meeting |
| 10 | Show and control camera in application |  | 2011-05-11 → 2011-05-16 (+5d) | 1d → 4d |  |  |  |
| 11 | Recognized characters and numbers | 2011-05-12 → 2011-05-11 (-1d) |  | 3d → 4d | 1d → 0d |  | resources DangTH; HieuNX → DangTH |
| 15 | Fix comments |  |  |  |  |  | resources LinhNAN; VuND → LinhNAN |
| 16 | Submit Report No.1: Project Introduction |  |  |  |  |  | was named Summit report 1 |
| 20 | Identifying, dicussing, and prioritizing risks | 2011-05-18 → 2011-05-20 (+2d) | 2011-05-19 → 2011-05-20 (+1d) | 2d → 1d? |  | 18 → 19 | constraint start no later than 2011-05-18 → start no later than 2011-05-20 |
| 21 | Review Project Plan |  |  |  |  | Create report 2 draff → 20 |  |
| 22 | Submit report No.2 : Project Plan |  |  |  |  |  | was named Summit report No.2 |
| 23 | **Elaboration** |  | 2011-08-10 → 2011-06-22 (-49d) | 57d → 22d |  |  |  |
| 25 | User Requirement Specification |  | 2011-05-26 → 2011-05-25 (-1d) | 3d → 2d |  |  | resources QuanTV; LinhNAN → QuanTV |
| 31 | Review SRS |  |  |  |  | System Requirement Specification → none | resources LinhNAN; QuanTV → QuanTV |
| 33 | **Design** |  | 2011-06-17 → 2011-06-22 (+5d) | 12d → 15d |  |  |  |
| 34 | Database Design |  |  |  | 0d → 13d | System Requirement Specification → 30 | resources DangTH; HieuNX → DangTH |
| 35 | **System Architecture Design** |  |  |  | 0d → none | 34 → none | constraint none → as late as possible; resources LinhNAN → none |
| 40 | **Create Code Prototype** |  | 2011-06-15 → 2011-06-10 (-5d) | 5d? → 2d | 0d → none |  | constraint finish no later than 2011-06-15 → as late as possible; resources US Team → none |
| 44 | Detailed design | 2011-06-02 → 2011-06-13 (+11d) | 2011-06-15 → 2011-06-22 (+7d) | 10d → 8d? |  | System Requirement Specification → 40 | constraint as late as possible → finish no later than 2011-06-22 |
| 45 | Submit report No.4 Software Design Description (SDD) | 2011-06-17 → 2011-06-22 (+5d) | 2011-06-17 → 2011-06-22 (+5d) |  | 12d → 15d |  |  |
| 46 | **Construction** | 2011-06-20 → 2011-06-23 (+3d) |  | 40d → 37d |  |  |  |
| 47 | **Coding** | 2011-06-20 → 2011-06-23 (+3d) |  | 30d → 27d |  |  |  |
| 48 | Client Development | 2011-06-20 → 2011-06-23 (+3d) |  | 15d → 12d | 30d → 33d |  | constraint start no later than 2011-06-20 → finish no later than 2011-07-10; resources DangTH; HieuNX; LinhNAN → US Team |
| 49 | Server Development |  |  |  |  |  | resources HieuNX; QuanTV; VuND → US Team |
| 50 | Crawl and synchronize Data Development |  |  |  | 25d → 22d |  | resources LinhNAN; HieuNX → LinhNAN; HieuNX; DangTH |
| 56 | Create and submit Report No.5 Software Test Documentation (STD) |  |  |  |  |  | resources LinhNAN; VuND → VuND |
| 62 | **Preclosing** | 2011-08-12 → 2011-08-15 (+3d) |  | 5d → 4d |  |  |  |
| 63 | Complete program and documents | 2011-08-12 → 2011-08-15 (+3d) |  | 5d → 4d |  |  |  |
